task_id,name,batch,source_role,scenario_resource_id,scenario_resource_name,assumed_remaining_effort_hours,scenario_start_date,scenario_finish_date,assumed_external_release_date,observed_verification_status
T001,建立单仓库目录与基础README,B1,架构/全栈,P02,占位-架构/安全设计,16,2026-10-19,2026-10-20,,PARTIAL_VERIFIED_SCOPE
T002,配置Python后端工程,B1,后端,P03,占位-后端开发,16,2026-10-21,2026-10-22,,PARTIAL_VERIFIED_SCOPE
T003,配置Vue前端工程,B1,前端,P04,占位-前端开发,16,2026-10-21,2026-10-22,,PARTIAL_VERIFIED_SCOPE
T010,建立架构决策记录和变更模板,B1,架构,P02,占位-架构/安全设计,16,2026-10-21,2026-10-22,,PARTIAL_VERIFIED_SCOPE
T004,建立本地容器开发环境,B1,DevOps,P10,占位-测试/运维,16,2026-10-23,2026-10-26,,PARTIAL_VERIFIED_SCOPE
T005,配置代码格式化与静态检查,B1,全栈,P03,占位-后端开发,16,2026-10-23,2026-10-26,,PARTIAL_VERIFIED_SCOPE
T008,建立统一日志与请求追踪,B1,后端,P03,占位-后端开发,16,2026-10-27,2026-10-28,,PARTIAL_VERIFIED_SCOPE
T009,建立统一异常与错误码框架,B1,后端,P03,占位-后端开发,16,2026-10-29,2026-10-30,,PARTIAL_VERIFIED_SCOPE
T011,设计用户角色与数据范围模型,B2,后端/安全,P03,占位-后端开发,16,2026-11-02,2026-11-03,,NO_FULL_TASK_VERIFICATION_EVIDENCE
T006,建立基础持续集成流水线,B1,DevOps,P10,占位-测试/运维,16,2026-10-27,2026-10-28,,PARTIAL_VERIFIED_SCOPE
T007,建立统一配置和密钥规范,B1,后端/DevOps,P10,占位-测试/运维,16,2026-10-29,2026-10-30,,PARTIAL_VERIFIED_SCOPE
T012,实现用户角色数据库模型,B2,后端,P03,占位-后端开发,16,2026-11-04,2026-11-05,,PARTIAL_VERIFIED_SCOPE
T019,设计内容与媒体资产模型,B2,数据/后端,P05,占位-数据工程/媒体,16,2026-11-04,2026-11-05,,NO_FULL_TASK_VERIFICATION_EVIDENCE
T013,实现认证与令牌校验,B2,后端/安全,P03,占位-后端开发,16,2026-11-06,2026-11-09,,PARTIAL_VERIFIED_SCOPE
T017,实现操作审计事件模型,B2,后端,P03,占位-后端开发,16,2026-11-10,2026-11-11,,PARTIAL_VERIFIED_SCOPE
T020,实现内容与媒体资产表,B2,后端,P03,占位-后端开发,16,2026-11-12,2026-11-13,,PARTIAL_VERIFIED_SCOPE
T117,建立应用安全自动化扫描,B7,安全/DevOps,P10,占位-测试/运维,16,2026-11-02,2026-11-03,,PARTIAL_VERIFIED_SCOPE
T014,实现接口级权限控制,B2,后端/安全,P03,占位-后端开发,16,2026-11-16,2026-11-17,,PARTIAL_VERIFIED_SCOPE
T031,设计分析任务与节点执行模型,B2,架构/后端,P02,占位-架构/安全设计,16,2026-11-16,2026-11-17,,PARTIAL_VERIFIED_SCOPE
T015,实现数据范围访问控制,B2,后端/安全,P03,占位-后端开发,16,2026-11-18,2026-11-19,,PARTIAL_VERIFIED_SCOPE
T016,实现高风险操作二次确认,B2,前后端/安全,P03,占位-后端开发,16,2026-11-20,2026-11-23,,PARTIAL_VERIFIED_SCOPE
T021,实现数据来源授权登记,B2,前后端,P04,占位-前端开发,16,2026-11-18,2026-11-19,,PARTIAL_VERIFIED_SCOPE
T022,实现分片上传初始化,B2,后端,P03,占位-后端开发,16,2026-11-24,2026-11-25,,PARTIAL_VERIFIED_SCOPE
T032,实现任务及节点数据库模型,B2,后端,P03,占位-后端开发,16,2026-11-26,2026-11-27,,PARTIAL_VERIFIED_SCOPE
T018,开发审计查询页面与接口,B2,前后端,P04,占位-前端开发,16,2026-11-20,2026-11-23,,PARTIAL_VERIFIED_SCOPE
T023,实现分片接收与校验,B2,后端,P03,占位-后端开发,16,2026-11-30,2026-12-01,,PARTIAL_VERIFIED_SCOPE
T029,实现第三方接入适配器协议,B2,后端,P03,占位-后端开发,16,2026-12-02,2026-12-03,,NO_FULL_TASK_VERIFICATION_EVIDENCE
T033,实现任务状态机,B2,后端,P03,占位-后端开发,16,2026-12-04,2026-12-07,,PARTIAL_VERIFIED_SCOPE
T024,实现分片合并与完整哈希,B2,后端,P03,占位-后端开发,16,2026-12-08,2026-12-09,,PARTIAL_VERIFIED_SCOPE
T034,实现任务创建接口,B2,后端,P03,占位-后端开发,16,2026-12-10,2026-12-11,,NO_FULL_TASK_VERIFICATION_EVIDENCE
T025,实现MinIO对象存储适配器,B2,后端,P03,占位-后端开发,16,2026-12-14,2026-12-15,,PARTIAL_VERIFIED_SCOPE
T026,实现媒体格式探测与安全校验,B2,后端/安全,P03,占位-后端开发,16,2026-12-16,2026-12-17,,PARTIAL_VERIFIED_SCOPE
T027,实现SHA-256完全重复检测,B2,后端,P03,占位-后端开发,16,2026-12-18,2026-12-21,,PARTIAL_VERIFIED_SCOPE
T035,实现任务查询和进度接口,B2,后端,P03,占位-后端开发,16,2026-12-22,2026-12-23,,PARTIAL_VERIFIED_SCOPE
T036,实现异步队列与优先级,B2,后端/DevOps,P10,占位-测试/运维,16,2026-12-14,2026-12-15,,PARTIAL_VERIFIED_SCOPE
T028,实现批量清单导入,B2,后端,P03,占位-后端开发,16,2026-12-24,2026-12-25,,PARTIAL_VERIFIED_SCOPE
T030,开发媒体资产管理页面,B2,前端,P04,占位-前端开发,16,2026-12-22,2026-12-23,,NO_FULL_TASK_VERIFICATION_EVIDENCE
T037,实现DAG任务编排器,B2,后端,P03,占位-后端开发,24,2026-12-28,2026-12-30,,NO_FULL_TASK_VERIFICATION_EVIDENCE
T038,实现节点级重试与检查点,B2,后端,P03,占位-后端开发,16,2026-12-31,2027-01-01,,PARTIAL_VERIFIED_SCOPE
T039,实现任务取消和退回重算,B2,后端,P03,占位-后端开发,16,2027-01-04,2027-01-05,,PARTIAL_VERIFIED_SCOPE
T041,实现图片元数据解析,B3,后端/算法,P06,占位-图像算法,16,2026-12-31,2027-01-01,,PARTIAL_VERIFIED_SCOPE
T042,实现视频ffprobe解析,B3,后端/算法,P07,占位-视频音频算法,16,2026-12-31,2027-01-01,,PARTIAL_VERIFIED_SCOPE
T051,定义统一模型输入输出契约,B3,算法平台,P06,占位-图像算法,16,2027-01-04,2027-01-05,,PARTIAL_VERIFIED_SCOPE
T118,实施上传与接口安全测试,B7,安全/测试,P10,占位-测试/运维,32,2026-12-28,2026-12-31,,PARTIAL_VERIFIED_SCOPE
T040,开发任务监控页面,B2,前端,P04,占位-前端开发,16,2027-01-06,2027-01-07,,NO_FULL_TASK_VERIFICATION_EVIDENCE
T043,实现标准化媒体副本生成,B3,后端/算法,P06,占位-图像算法,16,2027-01-06,2027-01-07,,PARTIAL_VERIFIED_SCOPE
T052,实现模型注册表,B3,后端/算法平台,P06,占位-图像算法,16,2027-01-08,2027-01-11,,NO_FULL_TASK_VERIFICATION_EVIDENCE
T079,实现图片感知哈希特征,B4,算法,P06,占位-图像算法,16,2027-01-12,2027-01-13,,NO_FULL_TASK_VERIFICATION_EVIDENCE
T083,实现局部特征提取与匹配,B4,算法,P06,占位-图像算法,16,2027-01-14,2027-01-15,,NO_FULL_TASK_VERIFICATION_EVIDENCE
T100,实现统一证据对象模型,B3,后端,P03,占位-后端开发,16,2027-01-06,2027-01-07,,NO_FULL_TASK_VERIFICATION_EVIDENCE
T044,实现镜头边界检测,B3,算法,P07,占位-视频音频算法,16,2027-01-08,2027-01-11,,NO_FULL_TASK_VERIFICATION_EVIDENCE
T045,实现固定间隔抽帧,B3,算法,P06,占位-图像算法,16,2027-01-18,2027-01-19,,PARTIAL_VERIFIED_SCOPE
T047,实现音轨与字幕提取,B3,算法,P07,占位-视频音频算法,16,2027-01-12,2027-01-13,,PARTIAL_VERIFIED_SCOPE
T053,实现统一推理网关,B3,算法平台,P06,占位-图像算法,16,2027-01-20,2027-01-21,,PARTIAL_VERIFIED_SCOPE
T058,实现模型评测记录管理,B3,后端/算法平台,P06,占位-图像算法,16,2027-01-22,2027-01-25,,NO_FULL_TASK_VERIFICATION_EVIDENCE
T061,定义风险标签和版本管理,B4,业务/后端,P03,占位-后端开发,16,2027-01-12,2027-01-13,,NO_FULL_TASK_VERIFICATION_EVIDENCE
T071,实现图片取证基础特征,B4,算法,P06,占位-图像算法,16,2027-01-26,2027-01-27,,NO_FULL_TASK_VERIFICATION_EVIDENCE
T046,实现镜头代表帧选择,B3,算法,P07,占位-视频音频算法,16,2027-01-20,2027-01-21,,NO_FULL_TASK_VERIFICATION_EVIDENCE
T049,接入ASR并建立时间片段,B3,算法,P08,占位-大模型/OCR/ASR,16,2027-01-14,2027-01-15,,NO_FULL_TASK_VERIFICATION_EVIDENCE
T054,实现HTTP与本地Mock适配器,B3,算法平台,P06,占位-图像算法,16,2027-01-28,2027-01-29,,NO_FULL_TASK_VERIFICATION_EVIDENCE
T055,实现推理批处理与GPU队列,B3,算法平台,P06,占位-图像算法,24,2027-02-01,2027-02-03,2026-11-16,NO_FULL_TASK_VERIFICATION_EVIDENCE
T056,实现模型健康检查与熔断,B3,算法平台,P06,占位-图像算法,16,2027-02-04,2027-02-05,,NO_FULL_TASK_VERIFICATION_EVIDENCE
T057,实现模型灰度发布,B3,算法平台,P06,占位-图像算法,16,2027-02-08,2027-02-09,,NO_FULL_TASK_VERIFICATION_EVIDENCE
T059,实现输入输出漂移监测,B3,算法平台,P06,占位-图像算法,16,2027-02-10,2027-02-11,,NO_FULL_TASK_VERIFICATION_EVIDENCE
T062,接入图片多标签分类模型,B4,算法,P06,占位-图像算法,16,2027-02-12,2027-02-15,,NO_FULL_TASK_VERIFICATION_EVIDENCE
T065,接入音频事件识别模型,B4,算法,P07,占位-视频音频算法,16,2027-01-22,2027-01-25,,NO_FULL_TASK_VERIFICATION_EVIDENCE
T072,接入图片篡改区域模型,B4,算法,P06,占位-图像算法,16,2027-02-16,2027-02-17,,NO_FULL_TASK_VERIFICATION_EVIDENCE
T074,实现视频时间结构异常检测,B4,算法,P07,占位-视频音频算法,24,2027-01-26,2027-01-28,,NO_FULL_TASK_VERIFICATION_EVIDENCE
T109,建立标注规范与标签质检工具,PARALLEL_DATA_TRAINING,数据/算法,P06,占位-图像算法,16,2027-02-18,2027-02-19,2026-11-16,NO_FULL_TASK_VERIFICATION_EVIDENCE
T125,建立算法实验公共框架,PARALLEL_DATA_TRAINING,算法平台,P06,占位-图像算法,24,2027-02-22,2027-02-24,2026-11-16,NO_FULL_TASK_VERIFICATION_EVIDENCE
T048,接入OCR并建立时间片段,B3,算法,P08,占位-大模型/OCR/ASR,16,2027-01-22,2027-01-25,,NO_FULL_TASK_VERIFICATION_EVIDENCE
T060,开发模型运维页面,B3,前端,P04,占位-前端开发,16,2027-02-12,2027-02-15,,NO_FULL_TASK_VERIFICATION_EVIDENCE
T063,接入敏感目标检测模型,B4,算法,P06,占位-图像算法,16,2027-02-25,2027-02-26,,NO_FULL_TASK_VERIFICATION_EVIDENCE
T073,实现复制粘贴与局部生成分类,B4,算法,P06,占位-图像算法,16,2027-03-01,2027-03-02,,NO_FULL_TASK_VERIFICATION_EVIDENCE
T080,实现视觉与复制检测向量生成,B4,算法,P06,占位-图像算法,16,2027-03-03,2027-03-04,,NO_FULL_TASK_VERIFICATION_EVIDENCE
T110,实现原始素材分组划分,PARALLEL_DATA_TRAINING,数据/算法,P06,占位-图像算法,16,2027-03-05,2027-03-08,2026-11-16,NO_FULL_TASK_VERIFICATION_EVIDENCE
T050,实现媒体统一时间轴服务,B3,后端,P03,占位-后端开发,16,2027-01-26,2027-01-27,,NO_FULL_TASK_VERIFICATION_EVIDENCE
T081,建立Milvus索引与版本管理,B4,数据/算法平台,P06,占位-图像算法,24,2027-03-09,2027-03-11,,PARTIAL_VERIFIED_SCOPE
T098,实现结构化主张抽取服务,B5,大模型/后端,P08,占位-大模型/OCR/ASR,16,2027-01-26,2027-01-27,,NO_FULL_TASK_VERIFICATION_EVIDENCE
T111,实现可控编辑数据增强流水线,PARALLEL_DATA_TRAINING,算法,P06,占位-图像算法,32,2027-03-12,2027-03-17,2026-11-16,NO_FULL_TASK_VERIFICATION_EVIDENCE
T126,建立训练数据版本与数据卡,PARALLEL_DATA_TRAINING,数据/算法,P06,占位-图像算法,24,2027-03-18,2027-03-22,2026-11-16,NO_FULL_TASK_VERIFICATION_EVIDENCE
T064,接入视频行为识别模型,B4,算法,P07,占位-视频音频算法,16,2027-01-29,2027-02-01,,NO_FULL_TASK_VERIFICATION_EVIDENCE
T075,实现视频空间篡改跟踪,B4,算法,P07,占位-视频音频算法,24,2027-02-18,2027-02-22,,NO_FULL_TASK_VERIFICATION_EVIDENCE
T076,接入深度伪造与音画同步检测,B4,算法,P06,占位-图像算法,16,2027-03-23,2027-03-24,,NO_FULL_TASK_VERIFICATION_EVIDENCE
T082,实现图片多路候选召回,B4,算法/后端,P06,占位-图像算法,16,2027-03-25,2027-03-26,,NO_FULL_TASK_VERIFICATION_EVIDENCE
T099,实现权威证据检索与关系判断,B5,大模型/检索,P08,占位-大模型/OCR/ASR,32,2027-01-28,2027-02-02,,NO_FULL_TASK_VERIFICATION_EVIDENCE
T120,实现监控指标与告警,B7,DevOps,P10,占位-测试/运维,24,2027-03-12,2027-03-16,,PARTIAL_VERIFIED_SCOPE
T127,冻结公安业务独立测试集,PARALLEL_DATA_TRAINING,业务/数据,P05,占位-数据工程/媒体,16,2027-03-23,2027-03-24,2026-11-02,NO_FULL_TASK_VERIFICATION_EVIDENCE
T128,建立算法基线结果台账,PARALLEL_DATA_TRAINING,算法,P06,占位-图像算法,24,2027-03-29,2027-03-31,2026-11-16,NO_FULL_TASK_VERIFICATION_EVIDENCE
T129,开展图片多标签风险数据分析,PARALLEL_DATA_TRAINING,算法/数据,P06,占位-图像算法,16,2027-04-01,2027-04-02,2026-11-16,NO_FULL_TASK_VERIFICATION_EVIDENCE
T134,构建视频行为训练片段与时间边界,PARALLEL_DATA_TRAINING,数据/算法,P07,占位-视频音频算法,24,2027-03-23,2027-03-25,2026-11-16,NO_FULL_TASK_VERIFICATION_EVIDENCE
T142,构建图片篡改成组训练集,PARALLEL_DATA_TRAINING,数据/算法,P06,占位-图像算法,32,2027-04-05,2027-04-08,2026-11-16,NO_FULL_TASK_VERIFICATION_EVIDENCE
T147,构建视频篡改与深伪训练集,PARALLEL_DATA_TRAINING,数据/算法,P07,占位-视频音频算法,40,2027-03-26,2027-04-01,2026-11-16,NO_FULL_TASK_VERIFICATION_EVIDENCE
T166,构建主张抽取监督微调数据,PARALLEL_DATA_TRAINING,数据/大模型,P08,占位-大模型/OCR/ASR,32,2027-03-23,2027-03-26,2026-11-02,NO_FULL_TASK_VERIFICATION_EVIDENCE
T066,实现多模态时间对齐,B4,算法,P06,占位-图像算法,16,2027-04-09,2027-04-12,,NO_FULL_TASK_VERIFICATION_EVIDENCE
T077,实现篡改多证据融合,B4,算法,P06,占位-图像算法,16,2027-04-13,2027-04-14,,NO_FULL_TASK_VERIFICATION_EVIDENCE
T084,实现RANSAC几何验证,B4,算法,P06,占位-图像算法,16,2027-04-15,2027-04-16,,NO_FULL_TASK_VERIFICATION_EVIDENCE
T086,实现视频帧检索候选聚合,B4,算法,P07,占位-视频音频算法,16,2027-04-02,2027-04-05,,NO_FULL_TASK_VERIFICATION_EVIDENCE
T130,训练图片多标签风险基线模型,PARALLEL_DATA_TRAINING,算法,P06,占位-图像算法,32,2027-04-19,2027-04-22,2026-11-16,NO_FULL_TASK_VERIFICATION_EVIDENCE
T132,训练敏感目标检测模型,PARALLEL_DATA_TRAINING,算法,P06,占位-图像算法,40,2027-04-23,2027-04-29,2026-11-16,NO_FULL_TASK_VERIFICATION_EVIDENCE
T135,微调视频行为识别模型,PARALLEL_DATA_TRAINING,算法,P07,占位-视频音频算法,40,2027-04-06,2027-04-12,2026-11-16,NO_FULL_TASK_VERIFICATION_EVIDENCE
T137,微调音频事件识别模型,PARALLEL_DATA_TRAINING,算法,P07,占位-视频音频算法,32,2027-04-13,2027-04-16,2026-11-16,NO_FULL_TASK_VERIFICATION_EVIDENCE
T143,训练图片噪声残差分支,PARALLEL_DATA_TRAINING,算法,P06,占位-图像算法,32,2027-04-30,2027-05-05,2026-11-16,NO_FULL_TASK_VERIFICATION_EVIDENCE
T144,训练RGB语义与边界分支,PARALLEL_DATA_TRAINING,算法,P06,占位-图像算法,40,2027-05-06,2027-05-12,2026-11-16,NO_FULL_TASK_VERIFICATION_EVIDENCE
T148,训练视频时间篡改检测模型,PARALLEL_DATA_TRAINING,算法,P07,占位-视频音频算法,40,2027-04-19,2027-04-23,2026-11-16,NO_FULL_TASK_VERIFICATION_EVIDENCE
T150,微调人脸深度伪造检测模型,PARALLEL_DATA_TRAINING,算法,P06,占位-图像算法,40,2027-05-13,2027-05-19,2026-11-16,NO_FULL_TASK_VERIFICATION_EVIDENCE
T151,训练口型语音同步检测模型,PARALLEL_DATA_TRAINING,算法,P06,占位-图像算法,32,2027-05-20,2027-05-25,2026-11-16,NO_FULL_TASK_VERIFICATION_EVIDENCE
T167,微调主张抽取模型,PARALLEL_DATA_TRAINING,大模型,P08,占位-大模型/OCR/ASR,40,2027-03-29,2027-04-02,2026-11-02,NO_FULL_TASK_VERIFICATION_EVIDENCE
T168,构建并训练证据关系判断模型,PARALLEL_DATA_TRAINING,数据/大模型,P08,占位-大模型/OCR/ASR,48,2027-04-05,2027-04-12,2026-11-02,NO_FULL_TASK_VERIFICATION_EVIDENCE
T067,实现跨模态矛盾检测,B4,算法,P06,占位-图像算法,24,2027-05-26,2027-05-28,,NO_FULL_TASK_VERIFICATION_EVIDENCE
T078,开发篡改取证界面,B4,前端,P04,占位-前端开发,16,2027-04-15,2027-04-16,,NO_FULL_TASK_VERIFICATION_EVIDENCE
T085,实现图片局部区域检索,B4,前后端/算法,P06,占位-图像算法,16,2027-05-31,2027-06-01,,NO_FULL_TASK_VERIFICATION_EVIDENCE
T087,实现视频相似度矩阵构建,B4,算法,P07,占位-视频音频算法,16,2027-04-26,2027-04-27,,NO_FULL_TASK_VERIFICATION_EVIDENCE
T114,实现篡改模型评测流水线,PARALLEL_DATA_TRAINING,算法,P06,占位-图像算法,32,2027-06-02,2027-06-07,2026-11-16,NO_FULL_TASK_VERIFICATION_EVIDENCE
T131,优化风险类别不平衡与长尾召回,PARALLEL_DATA_TRAINING,算法,P06,占位-图像算法,32,2027-06-08,2027-06-11,2026-11-16,NO_FULL_TASK_VERIFICATION_EVIDENCE
T133,开展小目标低清目标专项优化,PARALLEL_DATA_TRAINING,算法,P06,占位-图像算法,32,2027-06-14,2027-06-17,2026-11-16,NO_FULL_TASK_VERIFICATION_EVIDENCE
T136,训练视频事件时间定位模型,PARALLEL_DATA_TRAINING,算法,P07,占位-视频音频算法,40,2027-04-28,2027-05-04,2026-11-16,NO_FULL_TASK_VERIFICATION_EVIDENCE
T138,构建跨模态一致与矛盾训练集,PARALLEL_DATA_TRAINING,数据/算法,P06,占位-图像算法,32,2027-06-18,2027-06-23,2026-11-16,NO_FULL_TASK_VERIFICATION_EVIDENCE
T145,训练图片多分支融合篡改模型,PARALLEL_DATA_TRAINING,算法,P06,占位-图像算法,40,2027-06-24,2027-06-30,2026-11-16,NO_FULL_TASK_VERIFICATION_EVIDENCE
T068,实现综合风险融合与校准,B4,算法,P06,占位-图像算法,24,2027-07-01,2027-07-05,,NO_FULL_TASK_VERIFICATION_EVIDENCE
T088,实现局部DTW与倒放对齐,B4,算法,P06,占位-图像算法,32,2027-07-06,2027-07-09,,NO_FULL_TASK_VERIFICATION_EVIDENCE
T139,训练跨模态矛盾检测模型,PARALLEL_DATA_TRAINING,算法,P06,占位-图像算法,40,2027-07-12,2027-07-16,2026-11-16,NO_FULL_TASK_VERIFICATION_EVIDENCE
T146,训练图片篡改类型分类模型,PARALLEL_DATA_TRAINING,算法,P06,占位-图像算法,32,2027-07-19,2027-07-22,2026-11-16,NO_FULL_TASK_VERIFICATION_EVIDENCE
T149,训练视频空间篡改检测与跟踪模型,PARALLEL_DATA_TRAINING,算法,P07,占位-视频音频算法,40,2027-07-01,2027-07-07,2026-11-16,NO_FULL_TASK_VERIFICATION_EVIDENCE
T069,实现风险转人工规则,B4,后端/业务,P03,占位-后端开发,16,2027-07-06,2027-07-07,,NO_FULL_TASK_VERIFICATION_EVIDENCE
T089,实现多源拼接来源映射,B4,算法/后端,P06,占位-图像算法,32,2027-07-23,2027-07-28,,NO_FULL_TASK_VERIFICATION_EVIDENCE
T113,实现风险模型训练与评测流水线,PARALLEL_DATA_TRAINING,算法,P06,占位-图像算法,40,2027-07-29,2027-08-04,2026-11-16,NO_FULL_TASK_VERIFICATION_EVIDENCE
T140,训练多模态风险融合模型,PARALLEL_DATA_TRAINING,算法,P06,占位-图像算法,40,2027-08-05,2027-08-11,2026-11-16,NO_FULL_TASK_VERIFICATION_EVIDENCE
T152,实施跨压缩跨生成器泛化训练,PARALLEL_DATA_TRAINING,算法,P06,占位-图像算法,40,2027-08-12,2027-08-18,2026-11-16,NO_FULL_TASK_VERIFICATION_EVIDENCE
T070,开发风险识别研判界面,B4,前端,P04,占位-前端开发,16,2027-07-08,2027-07-09,,NO_FULL_TASK_VERIFICATION_EVIDENCE
T090,实现高可信同源内容聚类,B5,算法/后端,P06,占位-图像算法,16,2027-08-19,2027-08-20,,NO_FULL_TASK_VERIFICATION_EVIDENCE
T101,实现风险与取证证据卡片接口,B6,后端,P03,占位-后端开发,16,2027-07-29,2027-07-30,,PARTIAL_VERIFIED_SCOPE
T112,建立难负样本挖掘流程,PARALLEL_DATA_TRAINING,算法/数据,P06,占位-图像算法,16,2027-08-23,2027-08-24,2026-11-16,NO_FULL_TASK_VERIFICATION_EVIDENCE
T115,实现同源与片段检索评测流水线,PARALLEL_DATA_TRAINING,算法,P06,占位-图像算法,32,2027-08-25,2027-08-30,2026-11-16,NO_FULL_TASK_VERIFICATION_EVIDENCE
T141,实施风险概率校准和业务阈值优化,PARALLEL_DATA_TRAINING,算法/业务,P06,占位-图像算法,24,2027-08-31,2027-09-02,2026-11-16,NO_FULL_TASK_VERIFICATION_EVIDENCE
T153,实施篡改模型校准与不确定性估计,PARALLEL_DATA_TRAINING,算法,P06,占位-图像算法,24,2027-09-03,2027-09-07,2026-11-16,NO_FULL_TASK_VERIFICATION_EVIDENCE
T091,实现首发排序特征工程,B5,算法,P06,占位-图像算法,16,2027-09-08,2027-09-09,,NO_FULL_TASK_VERIFICATION_EVIDENCE
T094,设计传播图谱数据模型,B5,数据/架构,P05,占位-数据工程/媒体,16,2027-08-23,2027-08-24,,NO_FULL_TASK_VERIFICATION_EVIDENCE
T102,实现人工复核工作流,B6,后端,P03,占位-后端开发,24,2027-08-02,2027-08-04,,PARTIAL_VERIFIED_SCOPE
T106,实现证据约束核查摘要,B6,大模型/后端,P08,占位-大模型/OCR/ASR,16,2027-08-02,2027-08-03,,NO_FULL_TASK_VERIFICATION_EVIDENCE
T154,构建图片复制检测对比学习样本,PARALLEL_DATA_TRAINING,数据/算法,P06,占位-图像算法,32,2027-09-10,2027-09-15,2026-11-16,NO_FULL_TASK_VERIFICATION_EVIDENCE
T164,构建首发排序训练内容簇,PARALLEL_DATA_TRAINING,数据/业务,P05,占位-数据工程/媒体,32,2027-08-25,2027-08-30,2026-11-02,NO_FULL_TASK_VERIFICATION_EVIDENCE
T092,训练和注册首发排序模型,B5,算法,P06,占位-图像算法,40,2027-09-16,2027-09-22,,NO_FULL_TASK_VERIFICATION_EVIDENCE
T095,实现传播图谱写入与查询,B5,后端,P03,占位-后端开发,16,2027-08-25,2027-08-26,,NO_FULL_TASK_VERIFICATION_EVIDENCE
T104,实现证据固化与完整性校验,B6,后端/安全,P03,占位-后端开发,24,2027-08-27,2027-08-31,,NO_FULL_TASK_VERIFICATION_EVIDENCE
T108,实现样本纠错与回流审批,B6,前后端/算法平台,P06,占位-图像算法,16,2027-09-23,2027-09-24,,PARTIAL_VERIFIED_SCOPE
T119,实施大模型安全测试,B7,安全/大模型,P08,占位-大模型/OCR/ASR,32,2027-08-04,2027-08-09,,NO_FULL_TASK_VERIFICATION_EVIDENCE
T155,训练图片复制检测向量模型,PARALLEL_DATA_TRAINING,算法,P06,占位-图像算法,40,2027-09-27,2027-10-01,2026-11-16,NO_FULL_TASK_VERIFICATION_EVIDENCE
T158,构建视频帧复制检测训练集,PARALLEL_DATA_TRAINING,数据/算法,P07,占位-视频音频算法,32,2027-09-16,2027-09-21,2026-11-16,NO_FULL_TASK_VERIFICATION_EVIDENCE
T169,研发无证据生成检测与句级引用校验,PARALLEL_DATA_TRAINING,大模型/安全,P08,占位-大模型/OCR/ASR,40,2027-08-10,2027-08-16,2026-11-02,NO_FULL_TASK_VERIFICATION_EVIDENCE
T093,实现首发候选查询服务,B5,后端,P03,占位-后端开发,16,2027-09-23,2027-09-24,,PARTIAL_VERIFIED_SCOPE
T096,实现隐式传播关系推断,B5,算法,P06,占位-图像算法,16,2027-10-04,2027-10-05,,NO_FULL_TASK_VERIFICATION_EVIDENCE
T105,实现可信时间与签名适配层,B6,安全/后端,P02,占位-架构/安全设计,16,2027-09-01,2027-09-02,,NO_FULL_TASK_VERIFICATION_EVIDENCE
T107,实现核查报告生成,B6,后端,P03,占位-后端开发,24,2027-09-27,2027-09-29,,NO_FULL_TASK_VERIFICATION_EVIDENCE
T116,实现首发和大模型核查评测,PARALLEL_DATA_TRAINING,算法/大模型,P08,占位-大模型/OCR/ASR,32,2027-09-23,2027-09-28,2026-11-16,NO_FULL_TASK_VERIFICATION_EVIDENCE
T121,实现备份恢复与灾备演练,B7,DevOps/数据,P10,占位-测试/运维,32,2027-09-01,2027-09-06,,PARTIAL_VERIFIED_SCOPE
T156,实施难负样本迭代训练,PARALLEL_DATA_TRAINING,算法/数据,P06,占位-图像算法,32,2027-10-06,2027-10-11,2026-11-16,NO_FULL_TASK_VERIFICATION_EVIDENCE
T157,优化复制向量与索引联合参数,PARALLEL_DATA_TRAINING,算法平台,P06,占位-图像算法,32,2027-10-12,2027-10-15,2026-11-16,NO_FULL_TASK_VERIFICATION_EVIDENCE
T159,训练视频关键帧复制检测模型,PARALLEL_DATA_TRAINING,算法,P07,占位-视频音频算法,40,2027-09-22,2027-09-28,2026-11-16,NO_FULL_TASK_VERIFICATION_EVIDENCE
T165,开展首发排序模型消融与校准,PARALLEL_DATA_TRAINING,算法,P06,占位-图像算法,32,2027-10-18,2027-10-21,2026-11-16,NO_FULL_TASK_VERIFICATION_EVIDENCE
T097,开发传播时间线和图谱界面,B5,前端,P04,占位-前端开发,16,2027-10-06,2027-10-07,,NO_FULL_TASK_VERIFICATION_EVIDENCE
T122,执行20并发验收性能测试,B7,测试/DevOps,P10,占位-测试/运维,32,2027-09-30,2027-10-05,2026-11-02,NO_FULL_TASK_VERIFICATION_EVIDENCE
T160,优化视频帧相似度模型,PARALLEL_DATA_TRAINING,算法,P07,占位-视频音频算法,32,2027-09-29,2027-10-04,2026-11-16,NO_FULL_TASK_VERIFICATION_EVIDENCE
T103,开发人工复核工作台,B6,前端,P04,占位-前端开发,32,2027-10-08,2027-10-13,,PARTIAL_VERIFIED_SCOPE
T123,执行100并发容量与长稳测试,B7,测试/DevOps,P10,占位-测试/运维,40,2027-10-06,2027-10-12,2026-11-02,NO_FULL_TASK_VERIFICATION_EVIDENCE
T161,训练学习型视频片段定位模型,PARALLEL_DATA_TRAINING,算法,P07,占位-视频音频算法,48,2027-10-05,2027-10-12,2026-11-16,NO_FULL_TASK_VERIFICATION_EVIDENCE
T162,训练多源拼接边界检测模型,PARALLEL_DATA_TRAINING,算法,P06,占位-图像算法,40,2027-10-22,2027-10-28,2026-11-16,NO_FULL_TASK_VERIFICATION_EVIDENCE
T163,实施视频检索分数校准,PARALLEL_DATA_TRAINING,算法,P07,占位-视频音频算法,24,2027-10-29,2027-11-02,2026-11-16,NO_FULL_TASK_VERIFICATION_EVIDENCE
T170,实施模型压缩导出与发布候选冻结,PARALLEL_DATA_TRAINING,算法平台,P06,占位-图像算法,48,2027-11-03,2027-11-10,2026-11-16,NO_FULL_TASK_VERIFICATION_EVIDENCE
T124,完成三类业务场景验收,B7,业务/测试,P10,占位-测试/运维,40,2027-11-11,2027-11-17,2026-11-02,NO_FULL_TASK_VERIFICATION_EVIDENCE
